# 00000 Client-Project-Schedule

Schedule from MS Project, 2026-03-25 to 2026-07-14, status date 2026-06-25, A marks actual dates.
Cornerstone Controls, Inc.

## Calendars

- Standard: Mon-Fri 08:00-12:00, 13:00-17:00; Sat-Sun off.

## Resources

| Resource | Notes |
| --- | --- |
| Paul McKinney |  |
| Dhiraj Patil |  |
| Leonard Clark |  |
| Lifecycle Services Engineer |  |
| Devam Bhalodi | Resource note here |
| Narayan Naik | another resource note |
| Piyush Chowdri |  |

## Schedule

| ID | WBS | Task | Type | Duration | Start | Finish | Predecessors | Complete | Remaining | Baseline start | Baseline finish | Baseline duration | Total slack | Constraint | Resources | Work | Actual work | Baseline cost |
| --- | --- | --- | --- | --- | --- | --- | --- | --- | --- | --- | --- | --- | --- | --- | --- | --- | --- | --- |
| 1 | 1 | **P3290 System Health Monitoring** |  | 80d | 2026-03-25 A | 2026-07-14 |  | 89% | 8.73d | 2026-03-25 | 2026-07-01 | 71d | 0d |  |  | 880h | 784h | -0 |
| 2 | 1.1 | **Project Launch** |  | 10d | 2026-03-25 A | 2026-04-07 A |  | 100% |  | 2026-03-25 | 2026-04-07 | 10d |  |  |  |  |  |  |
| 3 | 1.1.1 | Kickoff Meeting MS | milestone | 0d | 2026-04-01 A | 2026-04-01 A |  | 100% |  | 2026-04-01 | 2026-04-01 | 0d |  | start no earlier than 2026-04-01 | Paul McKinney |  |  |  |
| 4 | 1.1.2 | Pfizer Accounts Request MS | milestone | 0d | 2026-04-01 A | 2026-04-01 A | 3 | 100% |  | 2026-04-01 | 2026-04-01 | 0d |  |  | Piyush Chowdri |  |  |  |
| 5 | 1.1.3 | Pfizer Access Established MS | milestone | 0d | 2026-04-07 A | 2026-04-07 A | 4FS+1w | 100% |  | 2026-04-07 | 2026-04-07 | 0d |  |  | Piyush Chowdri |  |  |  |
| 6 | 1.1.4 | BOM Ordered MS | milestone | 0d | 2026-03-25 A | 2026-03-25 A |  | 100% |  | 2026-03-25 | 2026-03-25 | 0d |  | start no earlier than 2026-03-25 | Paul McKinney |  |  |  |
| 7 | 1.2 | **Design** |  | 22d | 2026-04-01 A | 2026-04-30 A |  | 100% |  | 2026-04-01 | 2026-04-30 | 22d |  |  |  | 176h | 176h |  |
| 8 | 1.2.1 | Identify Tag Naming Standards MS |  | 12d | 2026-04-01 A | 2026-04-16 A | 3 | 100% |  | 2026-04-01 | 2026-04-16 | 12d |  |  | Piyush Chowdri | 96h | 96h |  |
| 9 | 1.2.2 | Ignition Display Wireframes |  | 1w | 2026-04-17 A | 2026-04-23 A | 8 | 100% |  | 2026-04-17 | 2026-04-23 | 1w |  |  | Narayan Naik | 40h | 40h |  |
| 10 | 1.2.3 | Wireframes Approval |  | 1w | 2026-04-24 A | 2026-04-30 A | 9 | 100% |  | 2026-04-24 | 2026-04-30 | 1w |  |  | Piyush Chowdri | 40h | 40h |  |
| 11 | 1.3 | **Development** |  | 25d | 2026-05-01 A | 2026-06-04 A |  | 100% |  | 2026-05-01 | 2026-06-04 | 25d |  |  |  | 200h | 200h |  |
| 12 | 1.3.1 | Ignition Display Development |  | 2w | 2026-05-01 A | 2026-05-14 A | 10 | 100% |  | 2026-05-01 | 2026-05-14 | 2w |  |  | Narayan Naik | 80h | 80h |  |
| 13 | 1.3.2 | Ignition Application Development |  | 3w | 2026-05-15 A | 2026-06-04 A | 12 | 100% |  | 2026-05-15 | 2026-06-04 | 3w |  |  | Narayan Naik | 120h | 120h |  |
| 14 | 1.4 | **Testing** |  | 5d | 2026-06-05 A | 2026-06-11 A |  | 100% |  | 2026-06-05 | 2026-06-11 | 5d |  |  |  | 40h | 40h |  |
| 15 | 1.4.1 | Display and Configuration Testing |  | 1w | 2026-06-05 A | 2026-06-11 A | 13 | 100% |  | 2026-06-05 | 2026-06-11 | 1w |  |  | Leonard Clark | 40h | 40h |  |
| 16 | 1.5 | **System Configuration** |  | 48d | 2026-04-24 A | 2026-06-30 |  | 96% | 2d | 2026-04-24 | 2026-06-17 | 39d | 0d |  |  | 384h | 368h | -0 |
| 17 | 1.5.1 | BOM Arrived MS | milestone | 0d | 2026-04-24 A | 2026-04-24 A |  | 100% |  | 2026-04-24 | 2026-04-24 | 0d |  | start no earlier than 2026-04-24 | Piyush Chowdri |  |  |  |
| 18 | 1.5.2 | Network Change Requests MS | milestone | 0d | 2026-04-24 A | 2026-04-24 A | 17 | 100% |  | 2026-04-24 | 2026-04-24 | 0d |  |  | Piyush Chowdri |  |  |  |
| 19 | 1.5.3 | Network Changes Complete MS | milestone | 0d | 2026-04-30 A | 2026-04-30 A | 18FS+1w | 100% |  | 2026-04-30 | 2026-04-30 | 0d |  |  | Piyush Chowdri |  |  |  |
| 20 | 1.5.4 | KEPServerEX Configuration |  | 30d | 2026-05-01 A | 2026-06-11 A | 19 | 100% |  | 2026-05-01 | 2026-06-11 | 3w |  |  | Leonard Clark | 240h | 240h |  |
| 21 | 1.5.5 | Ignition Server Rack Install |  | 2d | 2026-05-01 A | 2026-05-04 A | 19 | 100% |  | 2026-05-01 | 2026-05-04 | 2d |  |  | Lifecycle Services Engineer | 16h | 16h |  |
| 22 | 1.5.6 | Install Ignition Gateway |  | 1d | 2026-05-05 A | 2026-05-05 A | 21 | 100% |  | 2026-05-05 | 2026-05-05 | 1d |  |  | Narayan Naik | 8h | 8h |  |
| 23 | 1.5.7 | Ignition Edge Install |  | 1d | 2026-05-06 A | 2026-05-06 A | 22 | 100% |  | 2026-05-06 | 2026-05-06 | 1d |  |  | Narayan Naik | 8h | 8h |  |
| 24 | 1.5.8 | Ignition Application Install |  | 1d | 2026-06-12 A | 2026-06-12 A | 15, 23 | 100% |  | 2026-06-12 | 2026-06-12 | 1d |  |  | Narayan Naik | 8h | 8h |  |
| 25 | 1.5.9 | Management Domain Ignition Edge | manual | 1d | 2026-06-11 A | 2026-06-11 A |  | 100% |  |  |  |  |  |  | Dhiraj Patil | 8h | 8h |  |
| 26 | 1.5.10 | Application Testing |  | 10d | 2026-06-15 A | 2026-06-26 A | 24 | 100% |  | 2026-06-15 | 2026-06-17 | 3d |  | start no earlier than 2026-06-15 | Leonard Clark | 80h | 80h |  |
| 27 | 1.5.11 | Validation Testing |  | 2d | 2026-06-29 | 2026-06-30 | 26 |  |  |  |  |  | 0d |  | Piyush Chowdri | 16h |  |  |

Notes:
- 3: Speical Notes / Cool Note
- 4: another note / nice color

| ID | WBS | Task | Duration | Start | Finish | Predecessors | Baseline start | Baseline finish | Baseline duration | Total slack | Resources | Work |
| --- | --- | --- | --- | --- | --- | --- | --- | --- | --- | --- | --- | --- |
| 28 | 1.6 | **Hypercare Support** | 10d | 2026-07-01 | 2026-07-14 |  | 2026-06-18 | 2026-07-01 | 10d | 0d |  | 80h |
| 29 | 1.6.1 | System Support | 2w | 2026-07-01 | 2026-07-14 | 26, 27 | 2026-06-18 | 2026-07-01 | 2w | 0d | Leonard Clark | 80h |
