# Lilly LMF Concept of Design

Schedule from MS Project XML, 2025-03-17 to 2025-11-06, costs in $.

## Calendars

- Standard: Mon-Fri 08:00-12:00, 13:00-17:00; Sat-Sun off.

## Resources

| Resource | Rate |
| --- | --- |
| Project Resources |  |
| LCS – Project Management Assistant | 44 |
| Automation Consultant | 44 |
| Do Not use | 70 |
| Hardware Designer | 44 |
| Documentation Specialists | 44 |
| EI Engineer | 44 |
| Do Not Use | 70 |
| Do Not Use | 70 |
| Automation Lead Engineer | 44 |
| Project Assistant | 44 |
| Do Not Use | 90 |
| Project Manager | 44 |
| Automation Engineer I | 44 |
| Automation Engineer II | 44 |
| Do Not use | 68 |
| LCS-Support/Site Service Systems En | 44 |
| Lead Engineer - Site Resident | 44 |
| MES Engineer - Site Resident | 44 |
| Senior/Lead Engineer - Blended Rate | 44 |
| Syncade Center of Excellence | 44 |
| DO NOT USE | 44 |
| DO NOT USE | 44 |
| Non Project Time | 44 |
| Non Project Time | 44 |
| Mileage |  |
| Non-Funded / Zero-Cost Work |  |
| On Call Stipend |  |
| MES Consultant | 44 |
| MES Engineer | 44 |
| MES Lead Engineer | 44 |
| Program Manager | 44 |
| Automation Senior Lead Engineer | 44 |
| No Charge Customer Goodwill | 44 |
| Resident Engineer | 44 |
| Other project specific | 44 |
| No Charge Warranty | 44 |
| Non Project Time | 44 |
| LCS-Site Lead Engineer | 44 |
| LCS-Project Manager | 44 |
| DO NOT USE | 44 |
| DO NOT USE | 44 |
| DO NOT USE | 44 |
| LCS-Site Service Engineer | 44 |
| RMS-Engineer | 44 |
| DO NOT USE | 44 |
| DO NOT USE | 44 |
| Automation Engineering Technician | 44 |
| EI Designer | 44 |
| MES Technician | 44 |
| Digital Solutions Consultant | 44 |
| Digital Solutions Senior Lead Engineer | 44 |
| Digital Solutions Lead Engineer | 44 |
| Automation Design Engineer | 44 |
| MES Senior Lead Engineer | 44 |
| MES Design Engineer | 44 |
| MES Engineer II | 44 |
| MES Engineer I | 44 |
| Senior Project Manager | 44 |
| Digital Solutions Design Engineer | 44 |
| LCS-Project Manager | 44 |
| MES Junior Engineer 2.0 Premium Rate | 44 |
| MES Engineer Junior | 44 |
| Project Controller | 44 |
| Emerson Consultant | 44 |
| Digital Solutions Engineer II | 44 |
| Digital Solutions Engineer I | 44 |

## Schedule

| ID | WBS | Task | Type | Duration | Start | Finish | Total slack | Constraint | Resources | Work | Cost | Sub Project ID | Import Comments | Text5 | Activity ID | Responsible | Activity Status | Text11 |
| --- | --- | --- | --- | --- | --- | --- | --- | --- | --- | --- | --- | --- | --- | --- | --- | --- | --- | --- |
| 1 | 1 | **Project Schedule** |  | 168d | 2025-03-17 | 2025-11-06 | 0d |  |  | 10752h | 473,088 | 10000 | New | P3154 |  |  |  |  |
| 2 | 1.1 | **Administration** |  | 168d | 2025-03-17 | 2025-11-06 | 0d |  |  | 10752h | 473,088 | 11000 | New | P3154 |  |  |  |  |
| 3 | 1.1.1 | Project Management | manual | 96d | 2025-03-17 | 2025-07-25 |  |  | Project Manager | 768h | 33,792 | 11000 | New | P3154 | 11010 | Paul McKinney | Planned | 100071588 |
| 4 | 1.1.2 | Project Management Assistance | manual | 96d | 2025-03-17 | 2025-07-25 |  | start no earlier than 2025-09-15 | Project Assistant | 768h | 33,792 | 11000 | New | P3154 | 11020 | Paul McKinney | Planned | 100071589 |
| 5 | 1.1.3 | Automation Lead Engineer LEAD | manual | 96d | 2025-03-17 | 2025-07-25 |  |  | Automation Lead Engineer | 768h | 33,792 | 11000 | New | P3154 | 11030 | Paul McKinney | Planned | 100071606 |
| 6 | 1.1.4 | Automation Consultant CONS | manual | 96d | 2025-03-17 | 2025-07-25 |  |  | Automation Consultant | 768h | 33,792 | 11000 | New | P3154 | 11040 | Paul McKinney | Planned | 100071605 |
| 7 | 1.1.5 | Automation Senior Lead SRLEAD | manual | 96d | 2025-03-17 | 2025-07-25 |  |  | Automation Senior Lead Engineer | 768h | 33,792 | 11000 | New | P3154 | 11050 | Paul McKinney | Planned | 100071604 |
| 8 | 1.1.6 | Automation Engineer II ENGR2 | manual | 96d | 2025-03-17 | 2025-07-25 |  |  | Automation Engineer II | 768h | 33,792 | 11000 | New | P3154 | 11060 | Paul McKinney | Planned | 100071603 |
| 9 | 1.1.7 | Automation Design Engineer DESENG | manual | 96d | 2025-03-17 | 2025-07-25 |  |  | Automation Design Engineer | 768h | 33,792 | 11000 | New | P3154 | 11070 | Paul McKinney | Planned | 100071602 |
| 10 | 1.1.8 | Hardware Designer ENGDFT | manual | 96d | 2025-03-17 | 2025-07-25 |  |  | Hardware Designer | 768h | 33,792 | 11000 | New | P3154 | 11080 | Paul McKinney | Planned | 100071601 |
| 11 | 1.1.9 | Lifecycle Services SSSENG | manual | 96d | 2025-03-17 | 2025-07-25 |  |  | LCS-Support/Site Service Systems En | 768h | 33,792 | 11000 | New | P3154 | 11090 | Paul McKinney | Planned | 100071607 |
| 12 | 1.1.10 | Digital Solutions Consultant DSCONS | manual | 96d | 2025-03-17 | 2025-07-25 |  |  | Digital Solutions Consultant | 768h | 33,792 | 11000 | New | P3154 | 11100 | Paul McKinney | Planned | 100071608 |
| 13 | 1.1.11 | Digital Solutions Senior Lead Engineer DSSRLEAD | manual | 96d | 2025-03-17 | 2025-07-25 |  |  | Digital Solutions Senior Lead Engineer | 768h | 33,792 | 11000 | New | P3154 | 11110 | Paul McKinney | Planned | 100071609 |
| 14 | 1.1.12 | Digital Solutions Lead Engineer DSLEAD | manual | 96d | 2025-03-17 | 2025-07-25 |  |  | Digital Solutions Lead Engineer | 768h | 33,792 | 11000 | New | P3154 | 11120 | Paul McKinney | Planned | 100071610 |
| 15 | 1.1.13 | Digital Solutions Engineer I DSENG1 | manual | 96d | 2025-03-17 | 2025-07-25 |  |  | Digital Solutions Engineer I | 768h | 33,792 | 11000 | New | P3154 | 11130 | Paul McKinney | Planned | 100071611 |
| 16 | 1.1.14 | Digital Solutions Engineer II DSENG2 | manual | 96d | 2025-03-17 | 2025-07-25 |  |  | Digital Solutions Engineer II | 768h | 33,792 | 11000 | New | P3154 | 11140 | Paul McKinney | Planned | 100071612 |
| 17 | 1.1.15 | Project Issues | manual | 95d | 2025-03-17 | 2025-07-25 |  |  |  |  |  | 11000 |  |  | ISSUES |  |  |  |
| 18 | 1.1.16 | Travel Expenses | manual | 96d | 2025-03-17 | 2025-07-25 |  |  |  |  |  | 11000 | New | P3154 | EXPENSE | Paul McKinney | Planned | 100071590 |
| 19 | 1.1.17 | **Estimates** |  | 38d | 2025-09-15 | 2025-11-06 | 0d |  |  |  |  | ESTIMATES | New | P3154 |  |  |  |  |
| 20 | 1.1.17.1 | PE25RF005-Rev 2 Labor Costs and Revenue | milestone, manual | 0d | 2025-09-15 | 2025-09-15 |  |  |  |  |  | ESTIMATES | New | P3154 | 00010 | Paul McKinney | Planned | 100071593 |
| 21 | 1.1.17.2 | PE25RF005-Rev 2 Material and Expenses | milestone, manual | 0d | 2025-11-06 | 2025-11-06 |  |  |  |  |  | ESTIMATES | New | P3154 | 00020 | Paul McKinney | Planned | 100071594 |
| 22 | 1.1.17.3 | QUOTE PCR01 Labor Costs and Revenue | milestone, manual | 0d | 2025-09-15 | 2025-09-15 |  |  |  |  |  | ESTIMATES | New | P3154 | 00030 | Paul McKinney | Planned | 100071592 |
| 23 | 1.1.17.4 | QUOTE PCR01 Material and Expenses | milestone, manual | 0d | 2025-11-06 | 2025-11-06 |  |  |  |  |  | ESTIMATES | New | P3154 | 00040 | Paul McKinney | Planned | 100071591 |
| 24 | 1.2 | Planning | manual | 14d | 2025-03-31 | 2025-04-17 |  |  |  |  |  | 10000 |  |  | 120110 |  |  |  |

| ID | WBS | Task | Type | Duration | Start | Finish | Sub Project ID | Activity ID |
| --- | --- | --- | --- | --- | --- | --- | --- | --- |
| 25 | 1.3 | **Automation WS** |  | 71d | 2025-04-18 | 2025-07-25 | 130000 |  |
| 26 | 1.3.1 | **Digital EM** |  | 70d | 2025-04-18 | 2025-07-24 | 130100 |  |
| 27 | 1.3.1.1 | Data Collection | manual | 20d | 2025-04-18 | 2025-05-15 | 130100 | 130110 |
| 28 | 1.3.1.2 | Analysis | manual | 20d | 2025-05-16 | 2025-06-12 | 130100 | 130120 |
| 29 | 1.3.1.3 | Draft Report Creation | manual | 20d | 2025-06-13 | 2025-07-10 | 130100 | 130130 |
| 30 | 1.3.1.4 | Final Report Edits | manual | 10d | 2025-07-11 | 2025-07-24 | 130100 | 130140 |
| 31 | 1.3.2 | **LIMS** |  | 70d | 2025-04-21 | 2025-07-25 | 130200 |  |
| 32 | 1.3.2.1 | Data Collection | manual | 20d | 2025-04-21 | 2025-05-16 | 130200 | 130210 |
| 33 | 1.3.2.2 | Analysis | manual | 20d | 2025-05-19 | 2025-06-13 | 130200 | 130220 |
| 34 | 1.3.2.3 | Draft Report Creation | manual | 20d | 2025-06-16 | 2025-07-11 | 130200 | 130230 |
| 35 | 1.3.2.4 | Final Report Edits | manual | 10d | 2025-07-14 | 2025-07-25 | 130200 | 130240 |
| 36 | 1.3.3 | **MES** |  | 70d | 2025-04-21 | 2025-07-25 | 130300 |  |
| 37 | 1.3.3.1 | Data Collection | manual | 20d | 2025-04-21 | 2025-05-16 | 130300 | 130310 |
| 38 | 1.3.3.2 | Analysis | manual | 20d | 2025-05-19 | 2025-06-13 | 130300 | 130320 |
| 39 | 1.3.3.3 | Draft Report Creation | manual | 20d | 2025-06-16 | 2025-07-11 | 130300 | 130330 |
| 40 | 1.3.3.4 | Final Report Edits | manual | 10d | 2025-07-14 | 2025-07-25 | 130300 | 130340 |
| 41 | 1.3.4 | **eLN** |  | 70d | 2025-04-21 | 2025-07-25 | 130400 |  |
| 42 | 1.3.4.1 | Data Collection | manual | 20d | 2025-04-21 | 2025-05-16 | 130400 | 130410 |
| 43 | 1.3.4.2 | Analysis | manual | 20d | 2025-05-19 | 2025-06-13 | 130400 | 130420 |
| 44 | 1.3.4.3 | Draft Report Creation | manual | 20d | 2025-06-16 | 2025-07-11 | 130400 | 130430 |
| 45 | 1.3.4.4 | Final Report Edits | manual | 10d | 2025-07-14 | 2025-07-25 | 130400 | 130440 |
| 46 | 1.4 | **Continous Improvement WS** |  | 70d | 2025-04-21 | 2025-07-25 | 140000 |  |
| 47 | 1.4.1 | **AI** |  | 70d | 2025-04-21 | 2025-07-25 | 140100 |  |
| 48 | 1.4.1.1 | Data Collection | manual | 20d | 2025-04-21 | 2025-05-16 | 140100 | 140110 |
| 49 | 1.4.1.2 | Analysis | manual | 10d | 2025-05-19 | 2025-05-30 | 140100 | 140120 |
| 50 | 1.4.1.3 | Draft Report Creation | manual | 20d | 2025-06-16 | 2025-07-11 | 140100 | 140130 |
| 51 | 1.4.1.4 | Final Report Edits | manual | 10d | 2025-07-14 | 2025-07-25 | 140100 | 140140 |

| ID | WBS | Task | Type | Duration | Start | Finish | Sub Project ID | Activity ID |
| --- | --- | --- | --- | --- | --- | --- | --- | --- |
| 52 | 1.4.2 | **Biometric Authentication** |  | 70d | 2025-04-21 | 2025-07-25 | 140200 |  |
| 53 | 1.4.2.1 | Data Collection | manual | 20d | 2025-04-21 | 2025-05-16 | 140200 | 140210 |
| 54 | 1.4.2.2 | Analysis | manual | 20d | 2025-05-19 | 2025-06-13 | 140200 | 140220 |
| 55 | 1.4.2.3 | Draft Report Creation | manual | 20d | 2025-06-16 | 2025-07-11 | 140200 | 140230 |
| 56 | 1.4.2.4 | Final Report Edits | manual | 10d | 2025-07-14 | 2025-07-25 | 140200 | 140240 |
| 57 | 1.4.3 | **Digital Twins** |  | 70d | 2025-04-21 | 2025-07-25 | 140300 |  |
| 58 | 1.4.3.1 | Data Collection | manual | 20d | 2025-04-21 | 2025-05-16 | 140300 | 140310 |
| 59 | 1.4.3.2 | Analysis | manual | 20d | 2025-05-19 | 2025-06-13 | 140300 | 140320 |
| 60 | 1.4.3.3 | Draft Report Creation | manual | 20d | 2025-06-16 | 2025-07-11 | 140300 | 140330 |
| 61 | 1.4.3.4 | Final Report Edits | manual | 10d | 2025-07-14 | 2025-07-25 | 140300 | 140340 |
| 62 | 1.4.4 | **PAT** |  | 70d | 2025-04-21 | 2025-07-25 | 140400 |  |
| 63 | 1.4.4.1 | Data Collection | manual | 20d | 2025-04-21 | 2025-05-16 | 140400 | 140410 |
| 64 | 1.4.4.2 | Analysis | manual | 20d | 2025-05-19 | 2025-06-13 | 140400 | 140420 |
| 65 | 1.4.4.3 | Draft Report Creation | manual | 20d | 2025-06-16 | 2025-07-11 | 140400 | 140430 |
| 66 | 1.4.4.4 | Final Report Edits | manual | 10d | 2025-07-14 | 2025-07-25 | 140400 | 140440 |
| 67 | 1.5 | **Digital Data WS** |  | 70d | 2025-04-21 | 2025-07-25 | 150000 |  |
| 68 | 1.5.1 | Data Collection | manual | 20d | 2025-04-21 | 2025-05-16 | 150000 | 150100 |
| 69 | 1.5.2 | Analysis | manual | 20d | 2025-05-19 | 2025-06-13 | 150000 | 150200 |
| 70 | 1.5.3 | Draft Report Creation | manual | 20d | 2025-06-16 | 2025-07-11 | 150000 | 150300 |
| 71 | 1.5.4 | Final Report Edits | manual | 10d | 2025-07-14 | 2025-07-25 | 150000 | 150400 |
| 72 | 1.6 | **PLM WS** |  | 70d | 2025-04-21 | 2025-07-25 | 160000 |  |
| 73 | 1.6.1 | **PLM** |  | 70d | 2025-04-21 | 2025-07-25 | 160100 |  |
| 74 | 1.6.1.1 | Data Collection | manual | 20d | 2025-04-21 | 2025-05-16 | 160100 | 160110 |
| 75 | 1.6.1.2 | Analysis | manual | 20d | 2025-05-19 | 2025-06-13 | 160100 | 160120 |
| 76 | 1.6.1.3 | Draft Report Creation | manual | 20d | 2025-06-16 | 2025-07-11 | 160100 | 160130 |
| 77 | 1.6.1.4 | Final Report Edits | manual | 10d | 2025-07-14 | 2025-07-25 | 160100 | 160140 |

| ID | WBS | Task | Type | Duration | Start | Finish | Sub Project ID | Activity ID |
| --- | --- | --- | --- | --- | --- | --- | --- | --- |
| 78 | 1.7 | **Integration WS** |  | 70d | 2025-04-21 | 2025-07-25 | 170000 |  |
| 79 | 1.7.1 | Data Collection | manual | 20d | 2025-04-21 | 2025-05-16 | 170000 | 170100 |
| 80 | 1.7.2 | Analysis | manual | 20d | 2025-05-19 | 2025-06-13 | 170000 | 170200 |
| 81 | 1.7.3 | Draft Report Creation | manual | 20d | 2025-06-16 | 2025-07-11 | 170000 | 170300 |
| 82 | 1.7.4 | Final Report Edits | manual | 10d | 2025-07-14 | 2025-07-25 | 170000 | 170400 |
